# Andhika Putra Ramadhan_20210110062_Seleksi Prak Mankon (Sesudah)

Schedule from MS Project, 2023-11-02 to 2024-09-18, status date 2024-08-08, 7 hours a day, costs in Rp, A marks actual dates.

## Calendars

- Standard: Mon-Sat 08:00-12:00, 13:00-16:00; Sun off.

## Resources

| Resource | Unit | Rate |
| --- | --- | --- |
| Pekerja |  | 8571.43 |
| Tukang |  | 11571.4 |
| Mandor |  | 13857.1 |
| Koordinator/Pengatur |  | 14000 |
| Tenaga Ahli Pengeboran |  | 12714.3 |
| Tenaga Ahli Sondir |  | 12714.3 |
| Ahli Kendali Mutu |  | 34285.7 |
| Asisten Ahli Kendali Mutu |  | 22000 |
| Staff Pendukung |  | 11285.7 |
| Soil & Agregat Testing |  | 9250000 |
| Bituminous Testing |  | 15600000 |
| Concrete Testing |  | 1500000 |
| Laporan Kendali Mutu |  | 1648.35 |
| Peralatan Sondir |  | 171429 |
| Peralatan Pengeboran |  | 285714 |
| Excavator |  | 529226 |
| Dump Truck 6 Ton |  | 267235 |
| Concrete Mixer |  | 105529 |
| Tamper |  | 47379 |
| Flat Bed Truck |  | 367021 |
| Water Tanker |  | 217970 |
| Bulldozer |  | 716689 |
| Wheel Loader |  | 550228 |
| Motor Grader |  | 728588 |
| Vibratory Roller |  | 295939 |
| Tandem Roller |  | 379426 |
| Asphalt Distributor |  | 246371 |
| Compressor |  | 164294 |
| Asphalt Mixing Plant |  | 6001449 |
| Generator Set |  | 435269 |
| Asphalt Finisher |  | 1012425 |
| Tire Roller |  | 519280 |
| Concrete Pan Mixer |  | 378024 |
| Truck Mixer |  | 515381 |
| Dump Truck 10 Ton |  | 442321 |
| Three Wheel Roller |  | 189017 |
| Asphalt Sprayer |  | 53459 |
| Concrete Vibrator |  | 43889 |
| Cetakan Besi | ls |  |
| Rambu Panah Berkedip | Buah | 125000 |
| Rambu Suar Berkedip | m' | 125000 |
| Rambu Tetap Informasi Pengalihan/Pengatur Lalu Lintas | Buah | 345000 |
| Rambu Penghalang Lalu Lintas Jenis Plastik | Buah | 75000 |
| Rambu Penghalang Lalu Lintas Jenis Beton | Buah | 450000 |
| Rambu Peringatan | Buah | 140000 |
| Rambu Petunjuk | Buah | 140000 |
| Pagar Jaring Pengaman Termasuk Perlengkapannya | m' | 12000 |
| Marka Jalan Sementara | m2 | 9000 |
| Peralatan Komunikasi dan Lainnya | set | 1500000 |
| Batu Kali | m3 | 190000 |
| Semen (PC) | Kg | 1640 |
| Pasir | m3 | 132143 |
| Beton K-300 | m3 | 860000 |
| Baja Tulangan Ulir D22 | Kg | 15300 |
| Urugan Porus | m3 | 160298 |
| Bahan Pilihan | m3 | 25000 |
| Pasir Beton | m3 | 305100 |
| Ag. 20-30 | m3 | 369519 |
| Ag. 5-10 dan 20-30 | m3 | 369519 |
| Ag. 0-5 | m3 | 369519 |
| Formworks | ls | 45000 |
| Paku | Kg | 12500 |
| Besi Beton | Kg | 15000 |
| Urugan Pilihan | m3 |  |
| Bahan Pengaman Tebing Galian | ls | 100000 |
| Agregat A | m3 | 240174 |
| Agregat B | m3 | 235003 |
| Agregat S | m3 | 230543 |
| Aspal | Kg | 8400 |
| Kerosene | liter | 11000 |
| Kawat Beton | Kg | 18000 |
| Kayu Pemecah | m3 | 159000 |
| Cat Marka | Kg | 27500 |
| Thinner | liter | 12000 |
| Blass Bit | Kg | 28600 |
| Pelat Rambu | Buah | 176000 |
| Pipa Galvanis Dia 1,6" | Batang | 540000 |
| Beton K-175 | m3 | 720000 |
| Cat dan Bahan Lainnya | ls |  |
| Baja Tulangan Polos D10 | Kg | 8400 |
| Mortar | m3 | 325000 |
| Tiang Oktagonal Base Plate Ornamen T Cabang Ganda | Buah | 4500000 |
| Lampu Sodium 250 Watt | Buah | 249286 |
| Kabel | m' | 7840 |
| Beton K-250 | m3 | 790000 |
| Reinforcing Steel Deform = 56 x 1.05 | Kg | 14562 |
| Miniature Cirxuit Breaker | Buah | 36400 |
| Plat Besi | m3 | 18750 |
| Copper Rod | Kg | 4480 |
| Pipa PVC dia 3" | m' | 40464 |
| Bahan Pemeliharaan Bahu Jalan Lainnya | ls | 477000 |
| Bahan Pemeliharaan Saluran Air | ls | 9880935 |
| Bahan Pemeliharaan Perlengkapan Jalan | ls | 2336506 |
| Alat Bantu | ls |  |
| Rambu Portabel Informasi Pengalihan/Pengaturan Lalu Lintas | Buah | 95000 |

## Schedule

| ID | WBS | Task | Duration | Start | Finish | Predecessors | Complete | Remaining | Baseline start | Baseline finish | Baseline duration | Total slack | Free slack | Resources | Work | Actual work | Cost | Baseline cost | Actual cost |
| --- | --- | --- | --- | --- | --- | --- | --- | --- | --- | --- | --- | --- | --- | --- | --- | --- | --- | --- | --- |
| 1 | 1 | **PEMBANGUNAN JALAN FLEXIBLE PAVEMENT** | 276d | 2023-11-02 A | 2024-09-18 |  | 93% | 19.25d | 2023-11-02 | 2024-09-18 | 276d | 0d |  |  | 107296h | 54101h | 16,028,907,462.51 | 16,028,907,462.51 | 10,469,832,667.74 |
| 2 | 1.1 | **DIV 1. UMUM** | 276d | 2023-11-02 A | 2024-09-18 |  | 89% | 30.38d | 2023-11-02 | 2024-09-18 | 276d | 0d |  |  | 36540h | 32375h | 9,214,273,384.62 | 9,214,273,384.62 | 9,179,405,600.33 |
| 3 | 1.1.1 | Mobilisasi | 8w | 2023-11-02 A | 2023-12-27 A |  | 100% |  | 2023-11-02 | 2023-12-27 | 8w |  |  | Soil & Agregat Testing; Bituminous Testing; Concrete Testing | 1008h | 1008h | 8,853,600,000 | 8,853,600,000 | 8,853,600,000 |
| 4 | 1.1.2 | Manajemen dan Keselamatan Lalu Lintas | 46w | 2023-11-02 A | 2024-09-18 | 3SS | 87% | 5.83w | 2023-11-02 | 2024-09-18 | 46w | 0d |  | Pekerja [150%]; Koordinator/Pengatur [50%]; Rambu Panah Berkedip [2 Buah]; Rambu Suar Berkedip [400 m']; Rambu Tetap Informasi Pengalihan/Pengatur Lalu Lintas [4 Buah]; Rambu Portabel Informasi Pengalihan/Pengaturan Lalu Lintas [8 Buah]; Rambu Penghalang Lalu Lintas Jenis Plastik [12 Buah]; Rambu Penghalang Lalu Lintas Jenis Beton [4 Buah]; Rambu Peringatan [8 Buah]; Rambu Petunjuk [8 Buah]; Pagar Jaring Pengaman Termasuk Perlengkapannya [400 m']; Marka Jalan Sementara [300 m2]; Peralatan Komunikasi dan Lainnya [2 set]; Alat Bantu [1 ls] | 3864h | 3374h | 106,194,000 | 106,194,000 | 92,727,369.57 |
| 5 | 1.1.3 | Manajemen Mutu | 46w | 2023-11-02 A | 2024-09-18 | 4SS | 87% | 5.83w | 2023-11-02 | 2024-09-18 | 46w | 0d |  | Ahli Kendali Mutu; Asisten Ahli Kendali Mutu; Staff Pendukung; Laporan Kendali Mutu [1200%] | 28980h | 25305h | 168,763,384.62 | 168,763,384.62 | 147,362,230.77 |
| 6 | 1.1.4 | Pengeboran, termasuk SPT dan Laporan | 4w | 2023-11-09 A | 2023-12-06 A | 3FF-3w | 100% |  | 2023-11-09 | 2023-12-06 | 4w |  |  | Tenaga Ahli Pengeboran [300%]; Pekerja [900%]; Peralatan Pengeboran; Alat Bantu [1 ls] | 2184h | 2184h | 67,368,000 | 67,368,000 | 67,368,000 |
| 7 | 1.1.5 | Sondir termasuk Laporan | 2w | 2023-11-09 A | 2023-11-22 A | 6SS | 100% |  | 2023-11-09 | 2023-11-22 | 2w |  |  | Tenaga Ahli Sondir; Pekerja [400%]; Peralatan Sondir; Alat Bantu [1 ls] | 504h | 504h | 18,348,000 | 18,348,000 | 18,348,000 |
| 8 | 1.2 | **DIV 2. PEKERJAAN DRAINASE** | 108d | 2023-12-28 A | 2024-05-01 A |  | 100% |  | 2023-12-28 | 2024-05-01 | 108d |  |  |  | 9000.6h | 9000.6h | 181,598,800.46 | 181,598,800.46 | 181,598,800.46 |
| 9 | 1.2.1 | Galian untuk Drainase Selokan dan Saluran Air | 16w | 2023-12-28 A | 2024-04-17 A | 3 | 100% |  | 2023-12-28 | 2024-04-17 | 16w |  |  | Pekerja [4%]; Mandor [1%]; Excavator [1%]; Dump Truck 6 Ton [13%]; Alat Bantu [1 ls] | 127.68h | 127.68h | 27,225,568.32 | 27,225,568.32 | 27,225,568.32 |
| 10 | 1.2.2 | Pasangan Batu dengan Mortar | 16w | 2024-01-11 A | 2024-05-01 A | 9SS+2w | 100% |  | 2024-01-11 | 2024-05-01 | 16w |  |  | Pekerja [402%]; Tukang [120%]; Mandor [40%]; Batu Kali [1.08 m3]; Semen (PC) [161 Kg]; Pasir [0.48 m3]; Concrete Mixer [40%]; Alat Bantu [1 ls] | 4045.44h | 4045.44h | 65,110,063.84 | 65,110,063.84 | 65,110,063.84 |
| 11 | 1.2.3 | Gorong - gorong Pipa Beton Bertulang, Diameter 75 - 85 cm | 4w | 2024-03-07 A | 2024-04-03 A | 10FF-4w | 100% |  | 2024-03-07 | 2024-04-03 | 4w |  |  | Pekerja [1400%]; Tukang [175%]; Mandor [175%]; Beton K-300 [0.29 m3]; Baja Tulangan Ulir D22 [31.87 Kg]; Urugan Porus [0.31 m3]; Bahan Pilihan [1.91 m3]; Tamper [238%]; Flat Bed Truck [17%]; Alat Bantu [1 ls] | 3368.4h | 3368.4h | 57,896,592.5 | 57,896,592.5 | 57,896,592.5 |
| 12 | 1.2.4 | Beton K250 (f'c 20) untuk Drainase | 6w | 2024-03-07 A | 2024-04-17 A | 11SS | 100% |  | 2024-03-07 | 2024-04-17 | 6w |  |  | Pekerja [402%]; Tukang [80%]; Mandor [11%]; Semen (PC) [370.8 Kg]; Pasir Beton [0.53 m3]; Batu Kali [0.74 m3]; Formworks [0.2 ls]; Paku [1.2 Kg]; Besi Beton [45 Kg]; Concrete Mixer [40%]; Water Tanker [6%]; Concrete Vibrator [40%]; Alat Bantu [1 ls] | 1459.08h | 1459.08h | 31,366,575.8 | 31,366,575.8 | 31,366,575.8 |
| 13 | 1.3 | **DIV 3. PEKERJAAN TANAH** | 180d | 2023-11-16 A | 2024-06-12 A |  | 100% |  | 2023-11-16 | 2024-06-12 | 180d |  |  |  | 908.04h | 908.04h | 166,154,796.28 | 166,154,796.28 | 166,154,796.28 |
| 14 | 1.3.1 | Galian Biasa | 24w | 2023-11-16 A | 2024-05-01 A | 7FS-1w | 100% |  | 2023-11-16 | 2024-05-01 | 24w |  |  | Pekerja [11%]; Mandor [3%]; Excavator [3%]; Dump Truck 6 Ton [9%]; Alat Bantu [1 ls] | 262.08h | 262.08h | 41,616,793.44 | 41,616,793.44 | 41,616,793.44 |
| 15 | 1.3.2 | Galian Struktur dengan Kedalaman 0-2 m | 10w | 2023-11-30 A | 2024-02-07 A | 14SS+2w | 100% |  | 2023-11-30 | 2024-02-07 | 10w |  |  | Pekerja [12%]; Mandor [2%]; Urugan Pilihan [0.5 m3]; Excavator [2%]; Bulldozer [3%]; Alat Bantu [1 ls] | 79.8h | 79.8h | 14,024,179.8 | 14,024,179.8 | 14,024,179.8 |
| 16 | 1.3.3 | Galian Struktur dengan Kedalaman 2-4 m | 8w | 2023-12-14 A | 2024-02-07 A | 15FF | 100% |  | 2023-12-14 | 2024-02-07 | 8w |  |  | Pekerja [17%]; Mandor [2%]; Urugan Pilihan [1 m3]; Bahan Pengaman Tebing Galian [1 ls]; Excavator [2%]; Bulldozer [2%]; Alat Bantu [1 ls] | 77.28h | 77.28h | 9,055,268.8 | 9,055,268.8 | 9,055,268.8 |
| 17 | 1.3.4 | Timbunan Biasa | 24w | 2023-12-14 A | 2024-05-29 A | 16SS | 100% |  | 2023-12-14 | 2024-05-29 | 24w |  |  | Pekerja [7%]; Mandor [2%]; Wheel Loader [2%]; Dump Truck 6 Ton [9%]; Motor Grader [1%]; Vibratory Roller [1%]; Water Tanker [1%]; Alat Bantu [1 ls] | 231.84h | 231.84h | 48,744,685.44 | 48,744,685.44 | 48,744,685.44 |
| 18 | 1.3.5 | Timbunan Pilihan | 24w | 2023-12-28 A | 2024-06-12 A | 16SS+2w | 100% |  | 2023-12-28 | 2024-06-12 | 24w |  |  | Pekerja [8%]; Mandor [2%]; Bahan Pilihan [1.2 m3]; Wheel Loader [1%]; Dump Truck 6 Ton [9%]; Motor Grader [1%]; Tandem Roller [2%]; Water Tanker [1%]; Alat Bantu [1 ls] | 241.92h | 241.92h | 47,980,950.24 | 47,980,950.24 | 47,980,950.24 |
| 19 | 1.3.6 | Penyiapan Badan Jalan | 4w | 2023-11-16 A | 2023-12-14 A | 18SF-2w | 100% |  | 2023-11-16 | 2023-12-14 | 4w |  |  | Pekerja [3%]; Mandor [1%]; Motor Grader [3%]; Vibratory Roller [2%]; Alat Bantu [1 ls] | 15.12h | 15.12h | 4,732,918.56 | 4,732,918.56 | 4,732,918.56 |
| 20 | 1.4 | **DIV 4. PELEBARAN PERKERASAN DAN BAHU JALAN** | 192d | 2024-01-25 A | 2024-09-04 |  | 86% | 26.29d | 2024-01-25 | 2024-09-04 | 192d | 12d |  |  | 388.08h | 334.95h | 95,606,039.34 | 95,606,039.34 | 82,518,778.64 |
| 21 | 1.4.1 | Lapis Pondasi Agregat Kelas A | 14w | 2024-01-25 A | 2024-05-01 A | 19FS+6w | 100% |  | 2024-01-25 | 2024-05-01 | 14w |  |  | Pekerja [5%]; Mandor [1%]; Agregat A [1.26 m3]; Wheel Loader [1%]; Dump Truck 6 Ton [23%]; Motor Grader [1%]; Tandem Roller [1%]; Water Tanker [1%]; Alat Bantu [1 ls] | 194.04h | 194.04h | 47,809,087.2 | 47,809,087.2 | 47,809,087.2 |
| 22 | 1.4.2 | Lapis Pondasi Agregat Kelas S Bahu Jalan | 14w | 2024-05-30 A | 2024-09-04 | 21FS+4w | 73% | 3.83w | 2024-05-30 | 2024-09-04 | 14w | 12d | 0d | Pekerja [5%]; Mandor [1%]; Agregat S [1.26 m3]; Wheel Loader [1%]; Dump Truck 6 Ton [23%]; Motor Grader [1%]; Tandem Roller [1%]; Water Tanker [1%]; Alat Bantu [1 ls] | 194.04h | 140.91h | 47,796,952.14 | 47,796,952.14 | 34,709,691.44 |
| 23 | 1.5 | **DIV 5. PERKERASAN BERBUTIR** | 132d | 2024-01-25 A | 2024-06-26 A |  | 100% |  | 2024-01-25 | 2024-06-26 | 132d |  |  |  | 554.4h | 554.4h | 136,331,488.62 | 136,331,488.62 | 136,331,488.62 |
| 24 | 1.5.1 | Lapis Pondasi Agregat Kelas A | 20w | 2024-01-25 A | 2024-06-12 A | 21SS | 100% |  | 2024-01-25 | 2024-06-12 | 20w |  |  | Pekerja [5%]; Mandor [1%]; Agregat A [1.26 m3]; Wheel Loader [1%]; Dump Truck 6 Ton [23%]; Motor Grader [1%]; Tandem Roller [1%]; Water Tanker [1%]; Alat Bantu [1 ls] | 277.2h | 277.2h | 68,169,002.04 | 68,169,002.04 | 68,169,002.04 |
| 25 | 1.5.2 | Lapis Pondasi Agregat Kelas B | 20w | 2024-02-08 A | 2024-06-26 A | 24SS+2w | 100% |  | 2024-02-08 | 2024-06-26 | 20w |  |  | Pekerja [5%]; Mandor [1%]; Agregat B [1.26 m3]; Wheel Loader [1%]; Dump Truck 6 Ton [23%]; Motor Grader [1%]; Tandem Roller [1%]; Water Tanker [1%]; Alat Bantu [1 ls] | 277.2h | 277.2h | 68,162,486.58 | 68,162,486.58 | 68,162,486.58 |

| ID | WBS | Task | Duration | Start | Finish | Predecessors | Complete | Remaining | Baseline start | Baseline finish | Baseline duration | Total slack | Free slack | Resources | Work | Actual work | Cost | Baseline cost | Actual cost |
| --- | --- | --- | --- | --- | --- | --- | --- | --- | --- | --- | --- | --- | --- | --- | --- | --- | --- | --- | --- |
| 26 | 1.6 | **DIV 6. PERKERASAN ASPAL** | 108d | 2024-04-04 A | 2024-08-07 A |  | 100% |  | 2024-04-04 | 2024-08-07 | 108d |  |  |  | 764.4h | 764.4h | 296,685,534.18 | 296,685,534.18 | 296,685,534.18 |
| 27 | 1.6.1 | Lapis Resap Pengikat - Aspal Cair | 12w | 2024-04-04 A | 2024-06-26 A | 25SS+8w | 100% |  | 2024-04-04 | 2024-06-26 | 12w |  |  | Pekerja [3%]; Mandor [1%]; Aspal [0.07 Kg]; Kerosene [0.04 liter]; Asphalt Distributor [1%]; Compressor [1%] | 30.24h | 30.24h | 2,270,219.6 | 2,270,219.6 | 2,270,219.6 |
| 28 | 1.6.2 | Lapis Perekat - Aspal Cair | 14w | 2024-05-02 A | 2024-08-07 A | 27SS+4w | 100% |  | 2024-05-02 | 2024-08-07 | 14w |  |  | Pekerja [3%]; Mandor [1%]; Aspal [0.85 Kg]; Kerosene [0.21 liter]; Asphalt Distributor [1%]; Compressor [1%] | 35.28h | 35.28h | 2,656,840.2 | 2,656,840.2 | 2,656,840.2 |
| 29 | 1.6.3 | Laston Lapis Pondasi (AC-Base) | 12w | 2024-04-04 A | 2024-06-26 A | 27SS | 100% |  | 2024-04-04 | 2024-06-26 | 12w |  |  | Pekerja [20%]; Mandor [2%]; Ag. 20-30 [0.13 m3]; Ag. 5-10 dan 20-30 [0.37 m3]; Ag. 0-5 [0.18 m3]; Semen (PC) [21.9 Kg]; Aspal [107.5 Kg]; Wheel Loader [1%]; Asphalt Mixing Plant [2%]; Generator Set [2%]; Dump Truck 6 Ton [22%]; Asphalt Finisher [1%]; Tandem Roller [1%]; Tire Roller [1%]; Alat Bantu [1 ls] | 262.08h | 262.08h | 109,112,252.52 | 109,112,252.52 | 109,112,252.52 |
| 30 | 1.6.4 | Laston Lapis Antara (AC-BC) | 12w | 2024-05-02 A | 2024-07-24 A | 28SS | 100% |  | 2024-05-02 | 2024-07-24 | 12w |  |  | Pekerja [20%]; Mandor [2%]; Ag. 5-10 dan 20-30 [0.39 m3]; Ag. 0-5 [0.27 m3]; Aspal [121.9 Kg]; Semen (PC) [46.3 Kg]; Wheel Loader [1%]; Asphalt Mixing Plant [2%]; Generator Set [2%]; Dump Truck 6 Ton [22%]; Asphalt Finisher [1%]; Tandem Roller [1%]; Tire Roller [1%]; Alat Bantu [1 ls] | 262.08h | 262.08h | 109,265,838.14 | 109,265,838.14 | 109,265,838.14 |
| 31 | 1.6.5 | Laston Lapis Aus (AC-WC) | 8w | 2024-06-13 A | 2024-08-07 A | 28FF | 100% |  | 2024-06-13 | 2024-08-07 | 8w |  |  | Pekerja [20%]; Mandor [2%]; Ag. 20-30 [0.13 m3]; Ag. 5-10 dan 20-30 [0.37 m3]; Ag. 0-5 [0.18 m3]; Semen (PC) [52.21 Kg]; Aspal [130.41 Kg]; Wheel Loader [1%]; Asphalt Mixing Plant [2%]; Generator Set [2%]; Dump Truck 6 Ton [22%]; Asphalt Finisher [1%]; Tandem Roller [1%]; Tire Roller [1%]; Alat Bantu [1 ls] | 174.72h | 174.72h | 73,380,383.72 | 73,380,383.72 | 73,380,383.72 |
| 32 | 1.7 | **DIV 7.STRUKTUR** | 120d | 2024-01-25 A | 2024-06-12 A |  | 100% |  | 2024-01-25 | 2024-06-12 | 120d |  |  |  | 7562.52h | 7562.52h | 170,702,026.77 | 170,702,026.77 | 170,702,026.77 |
| 33 | 1.7.1 | **Pekerjaan Beton Talud** | 120d | 2024-01-25 A | 2024-06-12 A |  | 100% |  | 2024-01-25 | 2024-06-12 | 120d |  |  |  | 7562.52h | 7562.52h | 170,702,026.77 | 170,702,026.77 | 170,702,026.77 |
| 34 | 1.7.1.1 | Baja Tulangan Ulir | 10w | 2024-02-22 A | 2024-05-01 A | 16FS+2w | 100% |  | 2024-02-22 | 2024-05-01 | 10w |  |  | Pekerja [11%]; Tukang [4%]; Mandor [4%]; Baja Tulangan Ulir D22 [1.1 Kg]; Kawat Beton [0.02 Kg]; Alat Bantu [1 ls] | 79.8h | 79.8h | 840,390 | 840,390 | 840,390 |
| 35 | 1.7.1.2 | Beton f'c 20 Mpa | 6w | 2024-05-02 A | 2024-06-12 A | 34 | 100% |  | 2024-05-02 | 2024-06-12 | 6w |  |  | Pekerja [80%]; Tukang [110%]; Mandor [10%]; Semen (PC) [422.3 Kg]; Pasir Beton [0.54 m3]; Batu Kali [0.74 m3]; Kayu Pemecah [0.2 m3]; Concrete Pan Mixer [10%]; Paku [1.6 Kg]; Truck Mixer [22%]; Water Tanker [4%]; Alat Bantu [1 ls] | 594.72h | 594.72h | 46,630,591.04 | 46,630,591.04 | 46,630,591.04 |
| 36 | 1.7.1.3 | Pasangan Batu | 20w | 2024-01-25 A | 2024-06-12 A | 35FF | 100% |  | 2024-01-25 | 2024-06-12 | 20w |  |  | Pekerja [546%]; Tukang [137%]; Mandor [68%]; Batu Kali [1.17 m3]; Semen (PC) [176 Kg]; Pasir [0.51 m3]; Concrete Mixer [68%]; Water Tanker [1%]; Alat Bantu [1 ls] | 6888h | 6888h | 123,231,045.73 | 123,231,045.73 | 123,231,045.73 |
| 37 | 1.8 | **DIV 8. PENGEMBALIAN KONDISI DAN PEKERJAAN MINOR** | 84d | 2024-05-16 A | 2024-08-21 |  | 86% | 11.85d | 2024-05-16 | 2024-08-21 | 84d | 24d |  |  | 925.68h | 747.04h | 44,937,814.4 | 44,937,814.4 | 34,544,926.88 |
| 38 | 1.8.1 | Marka Jalan Termoplastik | 2w | 2024-08-08 A | 2024-08-21 | 31 | 8% | 1.83w | 2024-08-08 | 2024-08-21 | 2w | 24d |  | Pekerja [60%]; Tukang [23%]; Mandor [8%]; Cat Marka [1.95 Kg]; Thinner [1.05 liter]; Blass Bit [0.45 Kg]; Compressor [8%]; Dump Truck 6 Ton [8%]; Alat Bantu [1 ls] | 89.88h | 7.49h | 3,727,649.88 | 3,727,649.88 | 310,637.49 |
| 39 | 1.8.2 | Residu Bitumen untuk Pekerjaan Minor | 2w | 2024-07-25 A | 2024-08-07 A | 38SF | 100% |  | 2024-07-25 | 2024-08-08 | 2w |  |  | Pekerja [3%]; Mandor [1%]; Aspal [0.99 Kg]; Kerosene [0.14 liter]; Asphalt Sprayer [1%]; Compressor [1%]; Dump Truck 6 Ton [10%] | 13.44h | 13.44h | 2,470,782.52 | 2,470,782.52 | 2,470,782.52 |
| 40 | 1.8.3 | Rambu Jalan Tunggal dengan Permukaan Engineer Grade | 2w | 2024-07-25 A | 2024-08-07 A | 39FF | 100% |  | 2024-07-25 | 2024-08-08 | 2w |  |  | Pekerja [64%]; Tukang [38%]; Mandor [13%]; Pelat Rambu [1 Buah]; Pipa Galvanis Dia 1,6" [1 Batang]; Beton K-175 [0.02 m3]; Cat dan Bahan Lainnya [1 ls]; Dump Truck 10 Ton [13%]; Alat Bantu [1 ls] | 107.52h | 107.52h | 6,542,025.32 | 6,542,025.32 | 6,542,025.32 |
| 41 | 1.8.4 | Patok Pengarah | 6w | 2024-06-27 A | 2024-08-07 A | 40FF | 100% |  | 2024-06-27 | 2024-08-08 | 6w |  |  | Pekerja [54%]; Tukang [27%]; Mandor [7%]; Beton K-175 [0.04 m3]; Baja Tulangan Polos D10 [4.65 Kg]; Cat dan Bahan Lainnya [1 ls]; Dump Truck 6 Ton [7%]; Alat Bantu [1 ls] | 239.4h | 239.4h | 6,980,045.4 | 6,980,045.4 | 6,980,045.4 |
| 42 | 1.8.5 | Patok Kilometer | 4w | 2024-07-11 A | 2024-08-07 A | 41FF | 100% |  | 2024-07-11 | 2024-08-08 | 4w |  |  | Pekerja [39%]; Tukang [16%]; Mandor [8%]; Beton K-175 [0.15 m3]; Baja Tulangan Polos D10 [18.9 Kg]; Cat dan Bahan Lainnya [1 ls]; Dump Truck 6 Ton [8%]; Alat Bantu [1 ls] | 119.28h | 119.28h | 4,917,278.4 | 4,917,278.4 | 4,917,278.4 |
| 43 | 1.8.6 | Kerb Pracetak Jenis I (Peninggi/Mountable) | 6w | 2024-05-16 A | 2024-06-26 A | 41SF | 100% |  | 2024-05-16 | 2024-06-27 | 6w |  |  | Pekerja [36%]; Tukang [14%]; Mandor [4%]; Beton K-300 [0.06 m3]; Mortar [0.01 m3]; Flat Bed Truck [4%]; Alat Bantu [1 ls] | 146.16h | 146.16h | 5,079,941.68 | 5,079,941.68 | 5,079,941.68 |
| 44 | 1.8.7 | Unit Lampu Penerangan Jalan Lengan Ganda Tipe Merkuri 250 Watt | 4w | 2024-07-25 A | 2024-08-21 | 43FS+4w | 54% | 1.83w | 2024-07-25 | 2024-08-21 | 4w | 24d |  | Pekerja [84%]; Tukang [21%]; Mandor [10%]; Tiang Oktagonal Base Plate Ornamen T Cabang Ganda [1 Buah]; Lampu Sodium 250 Watt [2 Buah]; Kabel [15 m']; Beton K-250 [0.72 m3]; Reinforcing Steel Deform = 56 x 1.05 [58.8 Kg]; Miniature Cirxuit Breaker [1 Buah]; Plat Besi [0.72 m3]; Copper Rod [1.21 Kg]; Pipa PVC dia 3" [15 m']; Flat Bed Truck [10%]; Cetakan Besi [1 ls]; Alat Bantu [1 ls] | 210h | 113.75h | 15,220,091.2 | 15,220,091.2 | 8,244,216.07 |
| 45 | 1.9 | **DIV 9. PEKERJAAN PEMELIHARAAN RUTIN** | 36d | 2024-08-08 A | 2024-09-18 |  | 3% | 35d | 2024-08-08 | 2024-09-18 | 36d | 0d |  |  | 50652h | 1854.02h | 5,722,617,577.84 | 5,722,617,577.84 | 221,890,715.58 |
| 46 | 1.9.1 | Pemeliharaan Rutin Bahu Jalan | 4w | 2024-08-08 A | 2024-09-04 | 22FF | 4% | 3.83w | 2024-08-08 | 2024-09-04 | 4w | 12d | 0d | Pekerja [5635%]; Mandor [1127%]; Agregat B [20.28 m3]; Bahan Pemeliharaan Bahu Jalan Lainnya [1 ls]; Motor Grader [564%]; Flat Bed Truck [564%]; Three Wheel Roller [564%] | 14202.7h | 591.78h | 1,329,832,248.36 | 1,329,832,248.36 | 55,409,677.02 |
| 47 | 1.9.2 | Pemeliharaan Rutin Saluran Air | 4w | 2024-08-08 A | 2024-09-04 | 46SS | 4% | 3.83w | 2024-08-08 | 2024-09-04 | 4w | 12d | 0d | Pekerja [11270%]; Mandor [2254%]; Bahan Pemeliharaan Saluran Air [1 ls]; Motor Grader [2254%]; Dump Truck 6 Ton [2254%] | 30293.8h | 1262.24h | 3,995,544,925.56 | 3,995,544,925.56 | 166,481,038.56 |
| 48 | 1.9.3 | Pemeliharaan Rutin Perlengkapan Jalan | 4w | 2024-08-22 | 2024-09-18 | 47SS+2w |  |  | 2024-08-22 | 2024-09-18 | 4w | 0d |  | Pekerja [2818%]; Mandor [282%]; Bahan Pemeliharaan Perlengkapan Jalan [1 ls]; Flat Bed Truck [564%] | 6155.52h |  | 397,240,403.92 | 397,240,403.92 |  |
