# Prototype Soal Ganjil

Schedule from MS Project, 2024-01-01 to 2025-07-03, status date 2025-05-05, costs in Rp, A marks actual dates.

## Calendars

- Standard: Mon-Sat 07:00-12:00, 13:00-17:00; Sun off.

## Resources

| Resource | Group | Rate |
| --- | --- | --- |
| Pekerja | OH | 10000 |
| Tukang Batu | OH | 11428.6 |
| Kepala Tukang | OH | 12857.1 |
| Tukang Besi | OH | 11428.6 |
| Tukang Cat | OH | 10714.2 |
| Tukang Las | OH | 11428.6 |
| Mandor | OH | 12142.9 |
| Koordinator/Pengatur | OH | 21428.6 |
| Tenaga Ahli Pengeboran | OH | 14285.8 |
| Tenaga Ahli Sondir | OH | 9285.75 |
| Ahli Kendali Mutu | OH | 35714.2 |
| Asisten Ahli Kendali Mutu | OH | 24285.8 |
| Staff Pendukung | OH | 12857.1 |
| Alat Bantu | ls | 17857.1 |
| Soil & Agregating Testing | jam | 10000000 |
| Bituminous Testing | jam | 16500000 |
| Concrete Testing | jam | 2000000 |
| Rambu | unit | 21428.6 |
| Peralatan Pengeboran | unit | 357143 |
| Peralatan Sondir | unit | 214286 |
| Laporan Kendali Mutu | bulan | 2472.53 |
| Pan Mixer | jam | 653685 |
| Truck Mixer | jam | 798133 |
| Water Tanker | jam | 327633 |
| Crane | jam | 536029 |
| Traller | jam | 627000 |
| Welding Set | jam | 133213 |
| Concrete Mixer | jam | 92433 |
| Cutter Machine | jam | 4428.62 |
| Mesin Las Listrik | jam | 133000 |
| Bulldozer | jam | 716689 |
| Excavator | jam | 572632 |
| Dump Truck 6 Ton | jam | 335663 |
| Dump Truck 10 Ton | jam | 442321 |
| Cold Milding | jam | 1778213 |
| Motor Grader | jam | 535445 |
| Vibro Roller | jam | 448545 |
| Water Tank Truck | jam | 327633 |
| Wheel Loader | jam | 467112 |
| Tandem Roller | jam | 506388 |
| Asphalt Distributor | jam | 435537 |
| Compresor | jam | 242412 |
| AMP | jam | 7889000 |
| Genset | jam | 551000 |
| Asphalt Finisher | jam | 1143000 |
| Pneumatic Tire Roller | jam | 487668 |
| Flat Bed Truck | jam | 590019 |
| Cetakan besi | ls |  |
| Tamper | jam | 50000 |
| Pile driver hammer | jam | 286486 |
| Pagar Jaring | m |  |
| Marka Jalan Sementara | m2 |  |
| Concrete Pan Mixer | jam | 378024 |
| Gergaji Besi | unit | 100000 |
| Linggis | unit | 150000 |
| Pahat Beton | unit | 75000 |
| Palu Godam | unit | 150000 |
| Semen | Kg | 1200 |
| Pasir Beton | m3 | 346000 |
| Agregat Kasar | m3 | 289000 |
| Kayu Perancah | m3 | 1400000 |
| Paku | Kg | 20000 |
| Beton K500 | m3 | 2500000 |
| Multiplex tebal 18 mm | m3 | 50000 |
| Tiang Kayu 8/12 | m3 | 35000 |
| Frame Besi L30 x 30 x 30 | m3 | 135000 |
| Kabel Prategang | m | 150000 |
| Baja Tulangan Polos | Kg | 18000 |
| Angkur | unit | 480000 |
| Ducting | m' | 150000 |
| Baja Tulangan U32 | Kg | 19100 |
| Baja Tulangan Ulir D22 | Kg | 15300 |
| Rambu Panah Berkedip | unit | 150000 |
| Rambu Suar Berkedip Portabel | unit | 150000 |
| Rambu Tetap Informasi Pengalihan | unit | 350000 |
| Rambu Penghalang Lalu Lintas Plastik | unit | 100000 |
| Rambu Penghalang Lalu Lintas Beton | unit | 500000 |
| Rambu Peringatan | unit | 150000 |
| Rambu Petunjuk | unit | 150000 |
| Pagar Jaring termasuk Perlengkapannya | m' | 12000 |
| Peralatan Komunikasi dan Lainnya | set | 1500000 |
| Bahan Pengaman Tebing Galian | ls | 100000 |
| Kawat Beton | Kg | 33000 |
| Pipa Baja | Kg | 18000 |
| Plat Baja | Kg | 14000 |
| Batu Kali | m3 | 243425 |
| Pasir | m3 | 132943 |
| Expansion Joint tipe Baja Bersudut | m | 275000 |
| Batu | m3 | 243425 |
| Material Pilihan | m3 | 25000 |
| Bahan Timbunan | m3 | 132944 |
| Agregat A | m3 | 484498 |
| Agregat B | m3 | 451554 |
| Agregat S | m3 | 25717 |
| Aspal | Kg | 12106 |
| Kerosene | liter | 11000 |
| Ag. 20 - 30 | m3 | 369519 |
| Ag 5 - 10 dan 10 -20 | m3 | 367519 |
| Agregat 0 - 5 | m3 | 367519 |
| Aditif Anti Pengelupasan | Kg | 85000 |
| Cat Marka | Kg | 30000 |
| Cat Kayu | Kg | 30000 |
| Cuka Bibit | Kg | 50000 |
| Thinner | liter | 14000 |
| Blass Bit | Kg | 30000 |
| Tiang Oktagonal Base Plate Ornamen T Cabang Ganda | Buah | 4500000 |
| Lampu Sodium 250 Watt | Buah | 249286 |
| Kabel | m' | 7840 |
| Beton K-250 | m3 | 790000 |
| Reinforcing Steel Deform = 56 x 1,05 | Kg | 14562 |
| Miniature Circuit Braker | Buah | 36400 |
| Plat Besi | m3 | 18750 |
| Copper Rod | Kg | 4480 |
| Pipa PVC dia 3" | m' | 40464 |
| Bahan Pemeliharaan Bahu Jalan Lainnya | ls | 477000 |
| Pelat Rambu | unit | 200000 |
| Beton K175 | m3 | 1450000 |
| Cat | Kg | 30000 |
| Beton K300 | m3 | 1800000 |
| Mortar | m3 | 430000 |
| Paving Block | unit | 40000 |
| Beton K125 | m3 | 1250000 |
| Pipa Galvanis d. 3 inc | m | 40000 |
| Pipa Galvanis d. 1,6 inc | m | 20000 |

## Schedule

| ID | WBS | Task | Duration | Start | Finish | Predecessors | Complete | Remaining | Baseline start | Baseline finish | Baseline duration | Total slack | Free slack | Resources | Work | Actual work | Cost | Baseline cost | Actual cost |
| --- | --- | --- | --- | --- | --- | --- | --- | --- | --- | --- | --- | --- | --- | --- | --- | --- | --- | --- | --- |
| 1 | 1 | **Pembangunan Jembatan Kretek** | 530.12d | 2024-01-01 A | 2025-07-03 |  | 86% | 72.55d | 2024-01-01 | 2149-12-31 | 44377.8d | 0d |  |  | 340468h | 304786h | 19,633,330,112.25 | 19,630,962,076.64 | 18,887,199,361.08 |
| 2 | 1.1 | **Pekerjaan Persiapan** | 527.27d | 2024-01-01 A | 2025-06-30 |  | 92% | 42.19d | 2024-01-01 | 2025-09-13 | 599.61d | 2.85d |  |  | 315058h | 283656h | 18,310,553,027.02 | 18,310,553,027.02 | 17,716,609,833.81 |
| 3 | 1.1.1 | Pembersihan Lahan | 3w | 2024-01-01 A | 2024-01-19 A |  | 100% |  | 2024-01-01 | 2024-01-19 | 3w |  |  | Pekerja [2626%]; Mandor [131%] | 3970.08h | 3970.08h | 40,105,031.94 | 40,105,031.94 | 40,105,031.94 |
| 4 | 1.1.2 | Mobilisasi peralatan, material | 9w | 2024-01-01 A | 2024-02-26 A | 3SS | 100% |  | 2024-01-01 | 2024-02-26 | 9w |  |  | Soil & Agregating Testing; Bituminous Testing; Concrete Testing | 1296h | 1296h | 12,312,000,000 | 12,312,000,000 | 12,312,000,000 |
| 5 | 1.1.3 | Manajemen dan Keselamatan Lalu Lintas | 86w | 2024-01-12 A | 2025-06-30 | 4SS | 90% | 8.96w | 2024-01-01 | 2025-06-18 | 86w | 2.85d | 0d | Pekerja [1200%]; Koordinator/Pengatur [1200%]; Pagar Jaring; Marka Jalan Sementara; Rambu [4600%]; Alat Bantu | 301344h | 269942h | 5,699,601,324 | 5,699,601,324 | 5,105,658,130.8 |
| 6 | 1.1.4 | Pengeboran, termasuk SPT dan Laporan | 8w | 2024-01-06 A | 2024-02-26 A | 3FS-2w | 100% |  | 2025-06-19 | 2025-08-07 | 8w |  |  | Tenaga Ahli Pengeboran [300%]; Pekerja [900%]; Peralatan Pengeboran | 4992h | 4992h | 188,160,048 | 188,160,048 | 188,160,048 |
| 7 | 1.1.5 | Sondir termasuk Laporan | 4w | 2024-01-20 A | 2024-02-15 A | 6SS | 100% |  | 2025-08-07 | 2025-09-01 | 4w |  |  | Tenaga Ahli Sondir [300%]; Pekerja [900%]; Peralatan Sondir | 2496h | 2496h | 63,771,456 | 63,771,456 | 63,771,456 |
| 8 | 1.1.6 | Pekerjaan Bowplank | 2w | 2024-01-22 A | 2024-02-02 A | 5SS | 100% |  | 2025-09-01 | 2025-09-13 | 2w |  |  | Pekerja [500%]; Mandor; Laporan Kendali Mutu [400%] | 960h | 960h | 6,915,167.08 | 6,915,167.08 | 6,915,167.08 |
| 9 | 1.2 | **Pekerjaan Struktur** | 372d | 2024-04-23 A | 2025-05-14 |  | 97% | 12.23d | 2025-11-27 | 2149-11-08 | 43655.6d | 48d |  |  | 18344.2h | 18202.3h | 977,197,137.1 | 977,197,137.1 | 974,888,253.98 |
| 10 | 1.2.1 | Plat Beton Lantai Jembatan | 12w | 2024-11-08 A | 2025-01-22 A | 11FS+7w | 100% |  | 2026-06-17 | 2026-08-29 | 12w |  |  | Pekerja [80%]; Tukang Batu [181%]; Mandor [10%]; Semen [46968%]; Pasir Beton [51%]; Agregat Kasar [74%]; Kayu Perancah [40%]; Paku [320%]; Pan Mixer [10%]; Truck Mixer [15%]; Water Tanker [4%]; Alat Bantu | 2304h | 2304h | 143,245,708.4 | 143,245,708.4 | 143,245,708.4 |
| 11 | 1.2.2 | Abutmen dan Pilar | 17w | 2024-06-12 A | 2024-09-26 A | 13 | 100% |  | 2026-01-19 | 2026-05-04 | 17w |  |  | Pekerja [80%]; Tukang Batu [181%]; Mandor [10%]; Semen [46968%]; Pasir Beton [51%]; Agregat Kasar [74%]; Kayu Perancah [40%]; Paku [320%]; Pan Mixer [10%]; Truck Mixer [15%]; Water Tanker [4%]; Alat Bantu | 3264h | 3264h | 202,273,946.9 | 202,273,946.9 | 202,273,946.9 |
| 12 | 1.2.3 | Rangka Baja | 11w | 2024-08-31 A | 2024-11-08 A | 11SS+13w | 100% |  | 2026-04-09 | 2026-06-16 | 11w |  |  | Mandor; Kepala Tukang [1%]; Tukang Las [6%]; Pekerja [6%]; Baja Tulangan Ulir D22 [115%] | 68.64h | 68.64h | 764,339.46 | 764,339.46 | 764,339.46 |
| 13 | 1.2.4 | Penyediaan Tiang Borepile | 8w | 2024-04-23 A | 2024-06-12 A | 23 | 100% |  | 2025-11-27 | 2026-01-15 | 8w |  |  | Pekerja [1800%]; Tukang Besi [500%]; Mandor; Beton K500 [929%]; Baja Tulangan U32 [123816%]; Angkur [1200%]; Ducting [42000%]; Crane [180%]; Alat Bantu | 10291.2h | 10291.2h | 588,720,060.8 | 588,720,060.8 | 588,720,060.8 |
| 14 | 1.2.5 | Pasangan Batu | 4w | 2025-01-22 A | 2025-02-15 A | 10FF+4w | 100% |  | 2149-07-21 | 2149-08-14 | 4w |  |  | Pekerja [546%]; Tukang Batu [137%]; Mandor [68%]; Batu Kali [117%]; Semen [17600%]; Pasir [51%]; Concrete Mixer [68%]; Water Tanker [1%]; Alat Bantu | 1766.4h | 1766.4h | 31,764,243.3 | 31,764,243.3 | 31,764,243.3 |
| 15 | 1.2.6 | Expansion Joint Tipe Ruber 2 | 2w | 2025-04-25 A | 2025-05-08 | 14FS+11w | 78% | 0.44w | 2149-10-22 | 2149-11-03 | 2w | 54d | 0d | Pekerja [292%]; Tukang Las [117%]; Mandor [58%]; Expansion Joint tipe Baja Bersudut; Cutter Machine [85%]; Mesin Las Listrik [25%]; Alat Bantu | 649.92h | 508.03h | 10,305,638.24 | 10,305,638.24 | 8,055,752.81 |
| 16 | 1.2.7 | Sandaran | 3w | 2025-04-25 A | 2025-05-14 | 15SS | 52% | 1.44w | 2149-10-22 | 2149-11-08 | 3w | 48d |  | Pipa Galvanis d. 3 inc [308%] |  |  | 123,200 | 123,200 | 64,202.31 |
| 17 | 1.3 | **Pekerjaan Drainase** | 42d | 2025-01-09 A | 2025-02-22 A |  | 100% |  | 2149-07-28 | 2149-09-09 | 42d |  |  |  | 1004.16h | 1004.16h | 26,034,934.2 | 26,034,934.2 | 26,034,934.2 |
| 18 | 1.3.1 | Galian untuk selokan drainase dan saluran air | 4w | 2025-01-09 A | 2025-02-04 A | 10FS-2w | 100% |  | 2149-07-28 | 2149-08-21 | 4w |  |  | Pekerja [7%]; Tukang Batu [2%]; Excavator [2%]; Dump Truck 6 Ton [11%]; Alat Bantu | 234.24h | 234.24h | 12,894,963.36 | 12,894,963.36 | 12,894,963.36 |
| 19 | 1.3.2 | Pengecoran Beton Drainase | 4w | 2025-01-28 A | 2025-02-22 A | 18FS-1w | 100% |  | 2149-08-15 | 2149-09-09 | 4w |  |  | Pekerja [201%]; Tukang Batu [60%]; Mandor [20%]; Batu [108%]; Semen [16100%]; Pasir [48%]; Concrete Mixer [20%]; Alat Bantu | 769.92h | 769.92h | 13,139,970.84 | 13,139,970.84 | 13,139,970.84 |
| 20 | 1.4 | **Pekerjaan Tanah** | 66d | 2024-02-15 A | 2024-04-23 A |  | 100% |  | 2025-09-01 | 2025-11-27 | 84d |  |  |  | 924.48h | 924.48h | 87,185,761.56 | 87,185,761.56 | 87,185,761.56 |
| 21 | 1.4.1 | Pembersihan dan Pengupasan Lahan | 2w | 2024-02-15 A | 2024-02-27 A | 7 | 100% |  | 2025-09-01 | 2025-09-13 | 2w |  |  | Pekerja [7%]; Mandor [1%]; Excavator [1%]; Dump Truck 6 Ton [22%]; Alat Bantu | 125.76h | 125.76h | 9,432,070.44 | 9,432,070.44 | 9,432,070.44 |
| 22 | 1.4.2 | Galian Biasa | 5w | 2024-02-27 A | 2024-03-29 A | 21 | 100% |  | 2025-09-13 | 2025-10-14 | 5w |  |  | Pekerja [3%]; Mandor [1%]; Excavator [1%]; Dump Truck 6 Ton [22%]; Alat Bantu | 304.8h | 304.8h | 23,484,176.1 | 23,484,176.1 | 23,484,176.1 |
| 23 | 1.4.3 | Timbunan Biasa dari Galian | 7w | 2024-03-11 A | 2024-04-23 A | 22FS-3w | 100% |  | 2025-10-14 | 2025-11-27 | 7w |  |  | Pekerja [5%]; Mandor [1%]; Excavator [1%]; Dump Truck 6 Ton [37%]; Motor Grader [1%]; Vibro Roller [1%]; Water Tank Truck [1%]; Alat Bantu | 493.92h | 493.92h | 54,269,515.02 | 54,269,515.02 | 54,269,515.02 |
| 24 | 1.5 | **Perkerasan Berbutir** | 66d | 2025-01-28 A | 2025-04-07 A |  | 100% |  | 2149-08-15 | 2149-10-22 | 66d |  |  |  | 772.8h | 772.8h | 37,355,586.66 | 37,355,586.66 | 37,355,586.66 |
| 25 | 1.5.1 | Lapisan Pondasi Agregat Kelas A | 6w | 2025-02-28 A | 2025-04-07 A | 19FS+1w | 100% |  | 2149-09-15 | 2149-10-22 | 6w |  |  | Pekerja [6%]; Mandor [1%]; Agregat A [126%]; Wheel Loader [1%]; Dump Truck 6 Ton [2%]; Motor Grader [1%]; Tandem Roller [3%]; Water Tanker [1%]; Alat Bantu | 331.2h | 331.2h | 16,100,649.36 | 16,100,649.36 | 16,100,649.36 |
| 26 | 1.5.2 | Lapisan Pondasi Agregat Kelas B | 4w | 2025-02-10 A | 2025-03-06 A | 25SF+1w | 100% |  | 2149-08-27 | 2149-09-20 | 4w |  |  | Pekerja [6%]; Mandor [1%]; Agregat B [126%]; Wheel Loader [1%]; Dump Truck 6 Ton [2%]; Motor Grader [1%]; Tandem Roller [3%]; Water Tanker [1%]; Alat Bantu | 220.8h | 220.8h | 10,895,745.96 | 10,895,745.96 | 10,895,745.96 |
| 27 | 1.5.3 | Lapis Pondasi Agregat Kelas S | 4w | 2025-01-28 A | 2025-02-22 A | 26SF+2w | 100% |  | 2149-08-15 | 2149-09-09 | 4w |  |  | Pekerja [6%]; Mandor [1%]; Agregat S [126%]; Wheel Loader [1%]; Dump Truck 6 Ton [2%]; Motor Grader [1%]; Tandem Roller [3%]; Water Tanker [1%]; Alat Bantu | 220.8h | 220.8h | 10,359,191.34 | 10,359,191.34 | 10,359,191.34 |

| ID | WBS | Task | Duration | Start | Finish | Predecessors | Complete | Remaining | Baseline start | Baseline finish | Baseline duration | Total slack | Free slack | Resources | Work | Actual work | Cost | Baseline cost | Actual cost |
| --- | --- | --- | --- | --- | --- | --- | --- | --- | --- | --- | --- | --- | --- | --- | --- | --- | --- | --- | --- |
| 28 | 1.6 | **Perkerasan Aspal** | 30d | 2025-04-07 A | 2025-05-08 |  | 96% | 1.09d | 2149-10-22 | 2149-11-22 | 30d | 54d |  |  | 92.16h | 82.94h | 48,086,285.04 | 48,086,285.04 | 42,994,631.89 |
| 29 | 1.6.1 | Lapis Perekat Aspal Cair | 4w | 2025-04-07 A | 2025-05-01 A | 25 | 100% |  | 2149-10-22 | 2149-11-15 | 4w |  |  | Pekerja [1%]; Mandor [1%]; Aspal [68%]; Kerosene [37%]; Asphalt Distributor [1%]; Compresor [1%] | 7.68h | 7.68h | 1,356,478.48 | 1,356,478.48 | 1,356,478.48 |
| 30 | 1.6.2 | Laston Lapis Aus (AC - WC) | 4w | 2025-04-12 A | 2025-05-08 | 29SS+1w | 89% | 0.44w | 2149-10-29 | 2149-11-22 | 4w | 54d |  | Pekerja [24%]; Mandor [2%]; Ag 5 - 10 dan 10 -20 [33%]; Agregat 0 - 5 [31%]; Wheel Loader [1%]; AMP [2%]; Genset [2%]; Dump Truck 10 Ton [10%]; Asphalt Finisher [1%]; Tandem Roller [1%]; Pneumatic Tire Roller [1%] | 84.48h | 75.26h | 46,644,806.56 | 46,644,806.56 | 41,553,153.41 |
| 31 | 1.6.3 | Bahan Anti Pengelupasan | 4w | 2025-04-07 A | 2025-05-01 A | 29SF+4w | 100% |  | 2149-10-22 | 2149-11-15 | 4w |  |  | Aditif Anti Pengelupasan |  |  | 85,000 | 85,000 | 85,000 |
| 32 | 1.7 | **Pekerjaan Finishing** | 10w | 2025-05-01 A | 2025-07-03 |  | 3% | 9.74w | 2149-11-17 | 2149-12-31 | 43.88d |  |  |  | 4272.48h | 143.32h | 146,917,380.68 | 144,549,345.06 | 2,130,358.97 |
| 33 | 1.7.1 | Marka Jalan Termoplastik | 2w | 2025-05-08 | 2025-05-20 | 29FF+3w |  |  | 2149-11-22 | 2149-12-04 | 2w | 12d | 0d | Pekerja [600%]; Tukang Cat [23%]; Mandor [8%]; Cat Marka [195%]; Thinner [105%]; Blass Bit [45%]; Compresor [8%]; Dump Truck 6 Ton [8%]; Alat Bantu | 717.12h |  | 12,330,427.92 | 12,330,427.92 |  |
| 34 | 1.7.2 | Rambu Jalan dengan Permukaan Pemantul Engineer Grade | 4w | 2025-05-14 | 2025-06-07 | 33SS+1w |  |  | 2149-11-28 | 2149-12-23 | 4w | 12d | 0d | Pekerja [56%]; Tukang Cat [33%]; Mandor [11%]; Pelat Rambu; Pipa Galvanis d. 1,6 inc; Beton K175 [2%]; Cat; Dump Truck 6 Ton [11%]; Alat Bantu | 405.12h |  | 12,807,282.96 | 12,807,282.96 |  |
| 35 | 1.7.3 | Patok Pengarah | 3w | 2025-05-14 | 2025-06-02 | 34SS |  |  | 2149-11-28 | 2149-12-17 | 3w | 12d | 0d | Pekerja [42%]; Tukang Cat [21%]; Mandor [5%]; Beton K175 [4%]; Baja Tulangan Polos [465%]; Cat; Dump Truck 6 Ton [5%]; Alat Bantu | 249.12h |  | 6,176,127.22 | 6,176,127.22 |  |
| 36 | 1.7.4 | Kerb Pracetak jenis 1 (Peninggi/mountable) | 3w | 2025-06-02 | 2025-06-20 | 35 |  |  | 2149-12-17 | 2149-12-31 | 2.31w | 12d | 0d | Pekerja [39%]; Tukang Besi [16%]; Mandor [8%]; Beton K300 [6.9%]; Mortar [1.5%]; Flat Bed Truck [8%]; Alat Bantu; Cetakan besi | 390.24h |  | 10,464,750.49 | 8,096,714.87 |  |
| 37 | 1.7.5 | Perkerasan balok beton pada trotoar dan median | 7w | 2025-05-01 A | 2025-06-14 | 36SF+2w | 8% | 6.44w | 2149-11-17 | 2149-12-30 | 7w | 12d | 9.15d | Pekerja [4%]; Tukang Batu [161%]; Mandor [241%]; Paving Block [105%]; Pasir [5%]; Angkur [50%]; Tamper [24%]; Alat Bantu | 1780.8h | 143.32h | 26,470,284.59 | 26,470,284.59 | 2,130,358.97 |
| 38 | 1.7.6 | Pagar Pemisah Carbon Steel | 3w | 2025-06-11 | 2025-06-30 | 5FF, 37FF+1w |  |  | 2149-12-13 | 2149-12-31 | 3w | 2.85d |  | Pekerja [5%]; Tukang Las [9%]; Mandor [18%]; Beton K125 [6%]; Pipa Galvanis d. 1,6 inc [700%]; Pipa Galvanis d. 3 inc [308%]; Flat Bed Truck [5%]; Welding Set [370%]; Alat Bantu | 730.08h |  | 78,668,507.5 | 78,668,507.5 |  |
